# Replanificacion

Schedule from MS Project, 2013-04-29 to 2013-12-06, A marks actual dates.

## Calendars

- Estándar: Mon-Fri 09:00-13:00, 15:00-19:00; Sat-Sun off.

## Schedule

| ID | WBS | Task | Type | Duration | Start | Finish | Complete |
| --- | --- | --- | --- | --- | --- | --- | --- |
| 1 | 1 | **Iniciación** |  | 25d | 2013-04-29 A | 2013-05-31 A | 100% |
| 2 | 1.1 | **Acta de Constitución** |  | 5d | 2013-04-29 A | 2013-05-03 A | 100% |
| 3 | 1.1.1 | Sumario Ejecutivo del Proyecto | manual | 1d | 2013-04-30 A | 2013-04-30 A | 100% |
| 4 | 1.1.2 | Objetivos del Proyecto | manual | 1d | 2013-04-30 A | 2013-04-30 A | 100% |
| 5 | 1.1.3 | Entregables del Proyecto | manual | 1d | 2013-05-01 A | 2013-05-01 A | 100% |
| 6 | 1.1.4 | Organización del Proyecto | manual | 1d | 2013-04-29 A | 2013-04-29 A | 100% |
| 7 | 1.1.5 | Autoridad y Responsabilidad del J.P | manual | 1d | 2013-04-29 A | 2013-04-29 A | 100% |
| 8 | 1.1.6 | Enfoque de Implementación | manual | 1d | 2013-05-01 A | 2013-05-01 A | 100% |
| 9 | 1.1.7 | Plan de Alto Nivel | manual | 1d | 2013-05-02 A | 2013-05-02 A | 100% |
| 10 | 1.1.8 | Riesgos Identificados | manual | 1d | 2013-05-02 A | 2013-05-02 A | 100% |
| 11 | 1.1.9 | Supuestos | manual | 1d | 2013-05-03 A | 2013-05-03 A | 100% |
| 12 | 1.1.10 | Restricciones | manual | 1d | 2013-05-03 A | 2013-05-03 A | 100% |
| 13 | 1.1.11 | Identificación de los Interesados | manual | 1d | 2013-04-29 A | 2013-04-29 A | 100% |
| 14 | 1.2 | **Alcance preliminar** |  | 20d | 2013-05-06 A | 2013-05-31 A | 100% |
| 15 | 1.2.1 | Fundamentación del Proyecto | manual | 1d | 2013-05-06 A | 2013-05-06 A | 100% |
| 16 | 1.2.2 | **Organización** |  | 2d | 2013-05-06 A | 2013-05-07 A | 100% |
| 17 | 1.2.2.1 | Organigrama OPServices | manual | 1d | 2013-05-06 A | 2013-05-06 A | 100% |
| 18 | 1.2.2.2 | Organigrama Equipo | manual | 1d | 2013-05-07 A | 2013-05-07 A | 100% |
| 19 | 1.2.3 | **Proceso de Negocio** |  | 4d | 2013-05-06 A | 2013-05-09 A | 100% |
| 20 | 1.2.3.1 | Situación Actual | manual | 2d | 2013-05-08 A | 2013-05-09 A | 100% |
| 21 | 1.2.3.2 | B.P.M.N | manual | 2d | 2013-05-06 A | 2013-05-07 A | 100% |
| 22 | 1.2.4 | **Alcances del Proyectos** |  | 3d | 2013-05-13 A | 2013-05-15 A | 100% |
| 23 | 1.2.4.1 | Limitaciones del Alcance | manual | 2d | 2013-05-13 A | 2013-05-14 A | 100% |
| 24 | 1.2.4.2 | Supuestos del alcance | manual | 1d | 2013-05-15 A | 2013-05-15 A | 100% |

| ID | WBS | Task | Type | Duration | Start | Finish | Complete |
| --- | --- | --- | --- | --- | --- | --- | --- |
| 25 | 1.2.5 | **Objetivos del Proyecto** |  | 5d | 2013-05-20 A | 2013-05-24 A | 100% |
| 26 | 1.2.5.1 | Objetivos Generales | manual | 1d | 2013-05-23 A | 2013-05-23 A | 100% |
| 27 | 1.2.5.2 | Diagrama Causa Efecto | manual | 3d | 2013-05-20 A | 2013-05-22 A | 100% |
| 28 | 1.2.5.3 | Objetivos Específicos | manual | 1d | 2013-05-24 A | 2013-05-24 A | 100% |
| 29 | 1.2.6 | Solución Propuesta | manual | 1d | 2013-05-27 A | 2013-05-27 A | 100% |
| 30 | 1.2.7 | **Enfoque de la Solución** |  | 4d | 2013-05-28 A | 2013-05-31 A | 100% |
| 31 | 1.2.7.1 | Enfoque Técnico | manual | 1d | 2013-05-31 A | 2013-05-31 A | 100% |
| 32 | 1.2.7.2 | Enfoque Funcional | manual | 1d | 2013-05-31 A | 2013-05-31 A | 100% |
| 33 | 1.2.7.3 | Enfoque metodológico | manual | 3d | 2013-05-28 A | 2013-05-30 A | 100% |
| 34 | 2 | **Elaboración** |  | 41d | 2013-06-03 A | 2013-07-29 A | 100% |
| 35 | 2.1 | **Planificación** |  | 15d | 2013-06-03 A | 2013-06-21 A | 100% |
| 36 | 2.1.1 | **Planes Subsidiarios** |  | 5d | 2013-06-03 A | 2013-06-07 A | 100% |
| 37 | 2.1.1.1 | **Plan de gestión del alcance del proyecto** |  | 1d | 2013-06-03 A | 2013-06-03 A | 100% |
| 38 | 2.1.1.1.1 | **Definir Alcances** |  | 1d | 2013-06-03 A | 2013-06-03 A | 100% |
| 39 | 2.1.1.1.1.1 | Analisis de Producto | manual | 1d | 2013-06-03 A | 2013-06-03 A | 100% |
| 40 | 2.1.1.1.2 | **Deglosar Actividades** |  | 1d | 2013-06-03 A | 2013-06-03 A | 100% |
| 41 | 2.1.1.1.2.1 | E.D.T | manual | 1d | 2013-06-03 A | 2013-06-03 A | 100% |
| 42 | 2.1.1.1.3 | Controlar el Alcance | manual | 1d | 2013-06-03 A | 2013-06-03 A | 100% |
| 43 | 2.1.1.2 | **Plan de gestión de requisitos** |  | 1d | 2013-06-03 A | 2013-06-03 A | 100% |
| 44 | 2.1.1.2.1 | **Recopilar Requisitos** |  | 1d | 2013-06-03 A | 2013-06-03 A | 100% |
| 45 | 2.1.1.2.1.1 | Entrevistas | manual | 1d | 2013-06-03 A | 2013-06-03 A | 100% |
| 46 | 2.1.1.2.2 | **Formalización de Requerimientos** |  | 1d | 2013-06-03 A | 2013-06-03 A | 100% |
| 47 | 2.1.1.2.2.1 | Documento SRS | manual | 1d | 2013-06-03 A | 2013-06-03 A | 100% |
| 48 | 2.1.1.3 | **Plan de gestión del cronograma** |  | 1d | 2013-06-04 A | 2013-06-04 A | 100% |
| 49 | 2.1.1.3.1 | **Estimar la Duración de las Actividades** |  | 1d | 2013-06-04 A | 2013-06-04 A | 100% |
| 50 | 2.1.1.3.1.1 | Proxy ( PERT) | manual | 1d | 2013-06-04 A | 2013-06-04 A | 100% |

| ID | WBS | Task | Type | Duration | Start | Finish | Complete |
| --- | --- | --- | --- | --- | --- | --- | --- |
| 51 | 2.1.1.3.2 | **Desarrollar el Cronograma** |  | 1d | 2013-06-04 A | 2013-06-04 A | 100% |
| 52 | 2.1.1.3.2.1 | ¿Qué pasa si? | manual | 1d | 2013-06-04 A | 2013-06-04 A | 100% |
| 53 | 2.1.1.3.3 | **Controlar el Cronograma** |  | 1d | 2013-06-04 A | 2013-06-04 A | 100% |
| 54 | 2.1.1.3.3.1 | Revisiones | manual | 1d | 2013-06-04 A | 2013-06-04 A | 100% |
| 55 | 2.1.1.4 | **Plan de gestión de costos** |  | 1d | 2013-06-04 A | 2013-06-04 A | 100% |
| 56 | 2.1.1.4.1 | **Estimar Costos** |  | 1d | 2013-06-04 A | 2013-06-04 A | 100% |
| 57 | 2.1.1.4.1.1 | Estimación de Esfuerzo | manual | 1d | 2013-06-04 A | 2013-06-04 A | 100% |
| 58 | 2.1.1.4.1.2 | Punto Casos de Uso | manual | 1d | 2013-06-04 A | 2013-06-04 A | 100% |
| 59 | 2.1.1.4.1.3 | Proxy ( PERT) | manual | 1d | 2013-06-04 A | 2013-06-04 A | 100% |
| 60 | 2.1.1.4.2 | Determinar presupuesto | manual | 1d | 2013-06-04 A | 2013-06-04 A | 100% |
| 61 | 2.1.1.4.3 | Controlar Gastos | manual | 1d | 2013-06-04 A | 2013-06-04 A | 100% |
| 62 | 2.1.1.5 | **Plan de gestión de calidad** |  | 1d | 2013-06-05 A | 2013-06-05 A | 100% |
| 63 | 2.1.1.5.1 | **Planificar la Calidad** |  | 1d | 2013-06-05 A | 2013-06-05 A | 100% |
| 64 | 2.1.1.5.1.1 | Lluvia de Ideas | manual | 1d | 2013-06-05 A | 2013-06-05 A | 100% |
| 65 | 2.1.1.5.2 | **Elaboración del Plan de Pruebas** |  | 1d | 2013-06-05 A | 2013-06-05 A | 100% |
| 66 | 2.1.1.5.2.1 | Análisis de proceso | manual | 1d | 2013-06-05 A | 2013-06-05 A | 100% |
| 67 | 2.1.1.5.3 | **Realizar control de calidad** |  | 1d | 2013-06-05 A | 2013-06-05 A | 100% |
| 68 | 2.1.1.5.3.1 | Inspección | manual | 1d | 2013-06-05 A | 2013-06-05 A | 100% |
| 69 | 2.1.1.6 | **Plan de mejoras del proceso** |  | 1d | 2013-06-05 A | 2013-06-05 A | 100% |
| 70 | 2.1.1.6.1 | Límites del proceso | manual | 1d | 2013-06-05 A | 2013-06-05 A | 100% |
| 71 | 2.1.1.6.2 | Configuración del Proceso | manual | 1d | 2013-06-05 A | 2013-06-05 A | 100% |
| 72 | 2.1.1.6.3 | Objetivos de Desempeño | manual | 1d | 2013-06-05 A | 2013-06-05 A | 100% |
| 73 | 2.1.1.7 | **Plan de recursos humanos** |  | 1d | 2013-06-06 A | 2013-06-06 A | 100% |
| 74 | 2.1.1.7.1 | Organigramas del proyecto | manual | 1d | 2013-06-06 A | 2013-06-06 A | 100% |
| 75 | 2.1.1.7.2 | Roles y Responsabilidades | manual | 1d | 2013-06-06 A | 2013-06-06 A | 100% |
| 76 | 2.1.1.7.3 | Organigrama y descripción de los cargos | manual | 1d | 2013-06-06 A | 2013-06-06 A | 100% |

| ID | WBS | Task | Type | Duration | Start | Finish | Complete |
| --- | --- | --- | --- | --- | --- | --- | --- |
| 77 | 2.1.1.8 | **Plan de gestión de las comunicaciones** |  | 1d | 2013-06-06 A | 2013-06-06 A | 100% |
| 78 | 2.1.1.8.1 | Registro de Interesados | manual | 1d | 2013-06-06 A | 2013-06-06 A | 100% |
| 79 | 2.1.1.8.2 | **Procesos de la Organización** |  | 1d | 2013-06-06 A | 2013-06-06 A | 100% |
| 80 | 2.1.1.8.2.1 | Modelo de Comunicación | manual | 1d | 2013-06-06 A | 2013-06-06 A | 100% |
| 81 | 2.1.1.9 | **Plan de gestión de riesgos** |  | 1d | 2013-06-07 A | 2013-06-07 A | 100% |
| 82 | 2.1.1.9.1 | **Análisis de los riesgos** |  | 1d | 2013-06-07 A | 2013-06-07 A | 100% |
| 83 | 2.1.1.9.1.1 | Entrevista y lluvia de ideas | manual | 1d | 2013-06-07 A | 2013-06-07 A | 100% |
| 84 | 2.1.1.9.2 | Valorización de Riesgos | manual | 1d | 2013-06-07 A | 2013-06-07 A | 100% |
| 85 | 2.1.1.9.3 | Mitigación y Contingencia | manual | 1d | 2013-06-07 A | 2013-06-07 A | 100% |
| 86 | 2.1.1.10 | **Plan de gestión de las adquisiciones** |  | 1d | 2013-06-07 A | 2013-06-07 A | 100% |
| 87 | 2.1.1.10.1 | Identificación de necesidades | manual | 1d | 2013-06-07 A | 2013-06-07 A | 100% |
| 88 | 2.1.1.10.2 | **Planificación de compra** |  | 1d | 2013-06-07 A | 2013-06-07 A | 100% |
| 89 | 2.1.1.10.2.1 | Analisis de Hacer o Comrar | manual | 1d | 2013-06-07 A | 2013-06-07 A | 100% |
| 90 | 2.1.1.10.3 | Asignación de Recursos | manual | 1d | 2013-06-07 A | 2013-06-07 A | 100% |
| 91 | 2.1.2 | **Elaboración de entregables al Cliente Empresarial** |  | 5d | 2013-06-10 A | 2013-06-14 A | 100% |
| 92 | 2.1.2.1 | Documento de planificación | manual | 1d | 2013-06-10 A | 2013-06-10 A | 100% |
| 93 | 2.1.2.2 | Diseño de Prototipo | manual | 1d | 2013-06-14 A | 2013-06-14 A | 100% |
| 94 | 2.1.2.3 | Analisis de los riesgos | manual | 1d | 2013-06-11 A | 2013-06-11 A | 100% |
| 95 | 2.1.2.4 | Documento SRS | manual | 1d | 2013-06-12 A | 2013-06-12 A | 100% |
| 96 | 2.1.2.5 | Manual de Usuario | manual | 1d | 2013-06-14 A | 2013-06-14 A | 100% |
| 97 | 2.1.2.6 | Documentode Garantia de Calidad | manual | 1d | 2013-06-13 A | 2013-06-13 A | 100% |
| 98 | 2.1.3 | **Elaboración de entregables al Cliente Académico** |  | 5d | 2013-06-17 A | 2013-06-21 A | 100% |
| 99 | 2.1.3.1 | Documento de planificación | manual | 1d | 2013-06-18 A | 2013-06-18 A | 100% |
| 100 | 2.1.3.2 | Resultado de Iteraciones | manual | 1d | 2013-06-19 A | 2013-06-19 A | 100% |
| 101 | 2.1.3.3 | Diseño de Prototipo | manual | 1d | 2013-06-17 A | 2013-06-17 A | 100% |
| 102 | 2.1.3.4 | Hitos | manual | 1d | 2013-06-20 A | 2013-06-20 A | 100% |
| 103 | 2.1.3.5 | Informe Final | manual | 1d | 2013-06-21 A | 2013-06-21 A | 100% |

| ID | WBS | Task | Type | Duration | Start | Finish | Complete |
| --- | --- | --- | --- | --- | --- | --- | --- |
| 104 | 2.2 | **Iteracion 1 (UC03 / UC04 )** |  | 26d | 2013-06-24 A | 2013-07-29 A | 100% |
| 105 | 2.2.1 | **Analisis** |  | 8d | 2013-06-24 A | 2013-07-03 A | 100% |
| 106 | 2.2.1.1 | **Refinamiento de los requerimientos** |  | 8d | 2013-06-24 A | 2013-07-03 A | 100% |
| 107 | 2.2.1.1.1 | Requerimientos Funcionales | manual | 8d | 2013-06-24 A | 2013-07-03 A | 100% |
| 108 | 2.2.1.1.2 | Requerimientos no Funcionales | manual | 8d | 2013-06-24 A | 2013-07-03 A | 100% |
| 109 | 2.2.2 | **Diseño** |  | 9d | 2013-07-04 A | 2013-07-16 A | 100% |
| 110 | 2.2.2.1 | Definición de Arquitectura | manual | 2d | 2013-07-04 A | 2013-07-05 A | 100% |
| 111 | 2.2.2.2 | **Diagramas UML** |  | 6d | 2013-07-09 A | 2013-07-16 A | 100% |
| 112 | 2.2.2.2.1 | Diagrama de Casos de Uso | manual | 2d | 2013-07-09 A | 2013-07-10 A | 100% |
| 113 | 2.2.2.2.2 | Diagrama de Clases | manual | 2.5d | 2013-07-11 A | 2013-07-15 A | 100% |
| 114 | 2.2.2.2.3 | Diagrama de Actividades | manual | 2.5d | 2013-07-11 A | 2013-07-15 A | 100% |
| 115 | 2.2.2.2.4 | Diagrama de Despliegue | manual | 2d | 2013-07-09 A | 2013-07-10 A | 100% |
| 116 | 2.2.2.2.5 | Diagrama de Secuencia | manual | 1d | 2013-07-16 A | 2013-07-16 A | 100% |
| 117 | 2.2.2.3 | **Prototipos** |  | 2d | 2013-07-15 A | 2013-07-16 A | 100% |
| 118 | 2.2.2.3.1 | Mockups | manual | 1d | 2013-07-15 A | 2013-07-15 A | 100% |
| 119 | 2.2.2.3.2 | Muestras de Módulos | manual | 1d | 2013-07-16 A | 2013-07-16 A | 100% |
| 120 | 2.2.3 | **Codificación** |  | 4d | 2013-07-17 A | 2013-07-22 A | 100% |
| 121 | 2.2.3.1 | Framework | manual | 2.5d | 2013-07-17 A | 2013-07-19 A | 100% |
| 122 | 2.2.3.2 | C.M.S | manual | 2d | 2013-07-19 A | 2013-07-22 A | 100% |
| 123 | 2.2.4 | **Ejecución del plan de Pruebas** |  | 2d | 2013-07-22 A | 2013-07-23 A | 100% |
| 124 | 2.2.4.1 | **Documento de Resultado de Pruebas** |  | 2d | 2013-07-22 A | 2013-07-23 A | 100% |
| 125 | 2.2.4.1.1 | Plantilla Excel | manual | 2d | 2013-07-22 A | 2013-07-23 A | 100% |
| 126 | 2.2.5 | **Transición** |  | 5d | 2013-07-23 A | 2013-07-29 A | 100% |
| 127 | 2.2.5.1 | Implantación | manual | 3d | 2013-07-23 A | 2013-07-25 A | 100% |

| ID | WBS | Task | Type | Duration | Start | Finish | Complete | Remaining | Actual start | Constraint | Comentario |
| --- | --- | --- | --- | --- | --- | --- | --- | --- | --- | --- | --- |
| 128 | 2.2.5.2 | **Documentación de resultados y trabajos realizados** |  | 2d | 2013-07-26 A | 2013-07-29 A | 100% |  |  |  |  |
| 129 | 2.2.5.2.1 | Plantilla Excel | manual | 2d | 2013-07-26 A | 2013-07-29 A | 100% |  |  |  |  |
| 130 | 3 | **Construccion** |  | 80d | 2013-08-19 | 2013-12-06 | 86% | 10.81d | 2013-08-22 |  |  |
| 131 | 3.1 | **Iteración 2 (UC01 / UC02)** |  | 15d | 2013-08-22 A | 2013-09-11 A | 100% |  |  |  |  |
| 132 | 3.1.1 | Reunion con el Cliente | manual | 1d | 2013-08-27 A | 2013-08-27 A | 100% |  |  |  | Reunion suspendida por el cliente fecha cambiada |
| 133 | 3.1.2 | Prototipo del modulo | manual | 5d | 2013-08-22 A | 2013-08-28 A | 100% |  |  |  |  |
| 134 | 3.1.3 | **Corrección Errores iteración anterior** |  | 3d | 2013-08-26 A | 2013-08-28 A | 100% |  |  |  |  |
| 135 | 3.1.3.1 | Corrección UC03 | manual | 3d | 2013-08-26 A | 2013-08-28 A | 100% |  |  |  |  |
| 136 | 3.1.4 | **Analisis** |  | 6d | 2013-08-28 A | 2013-09-04 A | 100% |  |  |  |  |
| 137 | 3.1.4.1 | Refinamiento Requerimientos | manual | 6d | 2013-08-28 A | 2013-09-04 A | 100% |  |  |  |  |
| 138 | 3.1.4.2 | Documento de Visión | manual | 1d | 2013-09-02 A | 2013-09-02 A | 100% |  |  |  |  |
| 139 | 3.1.4.3 | Glosario | manual | 1d | 2013-09-03 A | 2013-09-03 A | 100% |  |  |  |  |
| 140 | 3.1.5 | **Diseño** |  | 8d | 2013-08-28 A | 2013-09-06 A | 100% |  |  |  |  |
| 141 | 3.1.5.1 | Casos de uso (Texto) | manual | 2d | 2013-08-28 A | 2013-08-29 A | 100% |  |  |  |  |
| 142 | 3.1.5.2 | Diagrama de Casos de Uso | manual | 1d | 2013-08-30 A | 2013-08-30 A | 100% |  |  |  |  |
| 143 | 3.1.5.3 | Diagrama de Clases | manual | 3d | 2013-08-30 A | 2013-09-03 A | 100% |  |  |  |  |
| 144 | 3.1.5.4 | Diagrama de Secuencia | manual | 1d | 2013-09-04 A | 2013-09-04 A | 100% |  |  |  |  |
| 145 | 3.1.5.5 | Diseño BD | manual | 5d | 2013-09-02 A | 2013-09-06 A | 100% |  |  |  |  |
| 146 | 3.1.6 | **Codificación** |  | 8d | 2013-08-29 A | 2013-09-09 A | 100% |  |  |  |  |
| 147 | 3.1.6.1 | GUI del modulo | manual | 4d | 2013-08-29 A | 2013-09-03 A | 100% |  |  |  |  |
| 148 | 3.1.6.2 | Funcionalidades del Modulo | manual | 5d | 2013-09-03 A | 2013-09-09 A | 100% |  |  |  |  |
| 149 | 3.1.6.3 | Integracion GUI / Funcionalidades | manual | 2d | 2013-09-06 A | 2013-09-09 A | 100% |  |  | finish no earlier than 2013-09-09 |  |
| 150 | 3.1.7 | **Pruebas** |  | 6d | 2013-09-04 A | 2013-09-11 A | 100% |  |  |  |  |
| 151 | 3.1.7.1 | Ejecucion de plan pruebas | manual | 4d | 2013-09-04 A | 2013-09-09 A | 100% |  |  |  |  |
| 152 | 3.1.7.2 | Documento Resultados | manual | 3d | 2013-09-09 A | 2013-09-11 A | 100% |  |  |  |  |

| ID | WBS | Task | Type | Duration | Start | Finish | Complete | Remaining | Constraint | Comentario |
| --- | --- | --- | --- | --- | --- | --- | --- | --- | --- | --- |
| 153 | 3.1.8 | **Gestión** |  | 15d | 2013-08-22 A | 2013-09-11 A | 100% |  |  |  |
| 154 | 3.1.8.1 | Costos | manual | 15d | 2013-08-22 A | 2013-09-11 A | 100% |  |  |  |
| 155 | 3.1.8.2 | Cronograma | manual | 15d | 2013-08-22 A | 2013-09-11 A | 100% |  |  |  |
| 156 | 3.1.8.3 | Riesgos | manual | 15d | 2013-08-22 A | 2013-09-11 A | 100% |  |  |  |
| 157 | 3.1.8.4 | Calidad | manual | 15d | 2013-08-22 A | 2013-09-11 A | 100% |  |  |  |
| 158 | 3.2 | **Iteración 3 (UC05 / UC06 / UC07)** |  | 27d | 2013-10-03 A | 2013-11-08 | 98% | 0.45d |  | Semana en Blanco Riesgo R10 |
| 159 | 3.2.1 | Reunión con el cliente | manual | 1d | 2013-10-03 A | 2013-10-03 A | 100% |  |  | Replanificación del proyecto |
| 160 | 3.2.2 | Prototipo del modulo | manual | 2d | 2013-10-03 A | 2013-10-04 A | 100% |  |  |  |
| 161 | 3.2.3 | Entrega Acedemica 1 | milestone, manual | 0d | 2013-10-08 A | 2013-10-08 A | 100% |  |  | Entrega del Hito 1 |
| 162 | 3.2.4 | Corrección Errores iteración anterior | manual | 4d | 2013-10-03 A | 2013-10-08 A | 100% |  |  |  |
| 163 | 3.2.5 | **Analisis** |  | 7d | 2013-10-07 A | 2013-10-15 A | 100% |  |  |  |
| 164 | 3.2.5.1 | Refinamiento de los Requerimientos | manual | 7d | 2013-10-07 A | 2013-10-15 A | 100% |  |  |  |
| 165 | 3.2.5.2 | Documento de Visión | manual | 4d | 2013-10-07 A | 2013-10-10 A | 100% |  |  |  |
| 166 | 3.2.5.3 | Glosario | manual | 1d | 2013-10-11 A | 2013-10-11 A | 100% |  |  |  |
| 167 | 3.2.6 | **Diseño** |  | 8d | 2013-10-14 A | 2013-10-23 A | 100% |  |  |  |
| 168 | 3.2.6.1 | Casos de uso (Texto) | manual | 4d | 2013-10-14 A | 2013-10-17 A | 100% |  |  | Corregir descripción ambiguas |
| 169 | 3.2.6.2 | Diagrama de Casos de Uso | manual | 2d | 2013-10-16 A | 2013-10-17 A | 100% |  |  |  |
| 170 | 3.2.6.3 | Diagrama de Clases | manual | 2d | 2013-10-18 A | 2013-10-21 A | 100% |  |  |  |
| 171 | 3.2.6.4 | Diagrama de Secuencia | manual | 1d | 2013-10-22 A | 2013-10-22 A | 100% |  |  |  |
| 172 | 3.2.6.5 | Diseño BD | manual | 5d | 2013-10-17 A | 2013-10-23 A | 100% |  |  |  |
| 173 | 3.2.7 | **Codificación** |  | 11d | 2013-10-24 A | 2013-11-07 | 83% | 1.89d |  |  |
| 174 | 3.2.7.1 | GUI del modulo | manual | 5d | 2013-10-24 A | 2013-10-30 A | 100% |  |  |  |
| 175 | 3.2.7.2 | Entrega Academica 2 | milestone, manual | 0d | 2013-11-06 A | 2013-11-06 A | 100% |  |  | Entrega del Hito 2 |
| 176 | 3.2.7.3 | Funcionalidades del Modulo | manual | 7d | 2013-10-29 A | 2013-11-06 | 75% | 1.75d |  |  |
| 177 | 3.2.7.4 | Integración GUI / Funcionalidades | manual | 4d | 2013-11-04 A | 2013-11-07 | 75% | 1d | start no earlier than 2013-11-04 |  |

| ID | WBS | Task | Type | Duration | Start | Finish | Complete | Remaining | Constraint | Comentario |
| --- | --- | --- | --- | --- | --- | --- | --- | --- | --- | --- |
| 178 | 3.2.8 | **Pruebas** |  | 6d | 2013-10-31 A | 2013-11-07 A | 100% |  |  |  |
| 179 | 3.2.8.1 | Ejecucion de pruebas | manual | 4d | 2013-10-31 A | 2013-11-05 A | 100% |  |  | Ejecución pendiente |
| 180 | 3.2.8.2 | Documento Resultados | manual | 3d | 2013-11-05 A | 2013-11-07 A | 100% |  |  | Pendiente |
| 181 | 3.2.9 | **Gestión** |  | 27d | 2013-10-03 A | 2013-11-08 A | 100% |  |  |  |
| 182 | 3.2.9.1 | Costos | manual | 27d | 2013-10-03 A | 2013-11-08 A | 100% |  |  |  |
| 183 | 3.2.9.2 | Cronograma | manual | 27d | 2013-10-03 A | 2013-11-08 A | 100% |  |  |  |
| 184 | 3.2.9.3 | Riesgos | manual | 27d | 2013-10-03 A | 2013-11-08 A | 100% |  |  |  |
| 185 | 3.2.9.4 | Calidad | manual | 27d | 2013-10-03 A | 2013-11-08 A | 100% |  |  |  |
| 186 | 3.3 | **Iteración 4 (UC08 / UC09 )** |  | 20d | 2013-11-11 A | 2013-12-06 | 61% | 7.76d |  |  |
| 187 | 3.3.1 | Reunion con el cliente | manual | 3d | 2013-11-12 A | 2013-11-14 A | 100% |  |  |  |
| 188 | 3.3.2 | Prototipo del modulo | manual | 2d | 2013-11-11 | 2013-11-12 |  |  |  |  |
| 189 | 3.3.3 | Corrección Errores iteración anterior | manual | 5d | 2013-11-12 | 2013-11-18 |  |  |  |  |
| 190 | 3.3.4 | **Analisis** |  | 7d | 2013-11-19 A | 2013-11-27 A | 100% |  |  |  |
| 191 | 3.3.4.1 | Refinamiento de los Requerimientos | manual | 4d | 2013-11-19 A | 2013-11-22 A | 100% |  |  |  |
| 192 | 3.3.4.2 | Documento de Visión | manual | 2d | 2013-11-22 A | 2013-11-25 A | 100% |  |  |  |
| 193 | 3.3.4.3 | Glosario | manual | 2d | 2013-11-26 A | 2013-11-27 A | 100% |  |  |  |
| 194 | 3.3.5 | **Diseño** |  | 5d | 2013-11-20 A | 2013-11-26 A | 100% |  |  |  |
| 195 | 3.3.5.1 | Casos de uso (Texto) | manual | 2d | 2013-11-20 A | 2013-11-21 A | 100% |  |  |  |
| 196 | 3.3.5.2 | Diagrama de Casos de Uso | manual | 1d | 2013-11-20 A | 2013-11-20 A | 100% |  |  |  |
| 197 | 3.3.5.3 | Diagrama de Clases | manual | 2d | 2013-11-20 A | 2013-11-21 A | 100% |  |  |  |
| 198 | 3.3.5.4 | Diagrama de Secuencia | manual | 2d | 2013-11-24 A | 2013-11-25 A | 100% |  |  |  |
| 199 | 3.3.5.5 | Diseño BD | manual | 4d | 2013-11-21 A | 2013-11-26 A | 100% |  |  |  |
| 200 | 3.3.6 | **Codificación** |  | 8d | 2013-11-25 A | 2013-12-04 |  | 8d |  |  |
| 201 | 3.3.6.1 | GUI del modulo | manual | 3d | 2013-11-25 A | 2013-11-27 |  | 3d |  |  |
| 202 | 3.3.6.2 | Funcionalidades del Modulo | manual | 3d | 2013-11-25 | 2013-11-27 |  |  |  |  |
| 203 | 3.3.6.3 | Integracion GUI / Funcionalidades | manual | 5d | 2013-11-28 | 2013-12-04 |  |  | start no earlier than 2013-11-28 |  |

| ID | WBS | Task | Type | Duration | Start | Finish | Complete | Remaining | Comentario |
| --- | --- | --- | --- | --- | --- | --- | --- | --- | --- |
| 204 | 3.3.7 | **Pruebas** |  | 10d | 2013-11-25 | 2013-12-06 |  |  |  |
| 205 | 3.3.7.1 | Ejecucion de pruebas | manual | 10d | 2013-11-25 | 2013-12-06 |  |  |  |
| 206 | 3.3.7.2 | Documento Resultados | manual | 4d | 2013-11-28 | 2013-12-03 |  |  |  |
| 207 | 3.3.8 | **Gestión** |  | 20d | 2013-11-11 A | 2013-12-06 | 75% | 5d |  |
| 208 | 3.3.8.1 | Costos | manual | 20d | 2013-11-11 A | 2013-12-06 A | 100% |  |  |
| 209 | 3.3.8.2 | Cronograma | manual | 20d | 2013-11-11 A | 2013-12-06 A | 100% |  |  |
| 210 | 3.3.8.3 | Riesgos | manual | 20d | 2013-11-11 A | 2013-12-06 A | 100% |  |  |
| 211 | 3.3.8.4 | Calidad | manual | 20d | 2013-11-11 A | 2013-12-06 |  | 20d |  |
| 212 | 4 | **Transición** |  | 15d | 2013-11-18 | 2013-12-06 |  |  |  |
| 213 | 4.1 | Actividad Académica | milestone, manual | 0d | 2013-12-05 | 2013-12-05 |  |  | Entrega Hito 3 |
| 214 | 4.2 | Implantación | manual | 7d | 2013-11-18 | 2013-11-26 |  |  |  |
| 215 | 4.3 | **Pruebas** |  | 8d | 2013-11-27 | 2013-12-06 |  |  |  |
| 216 | 4.3.1 | Documento resultado y trabajos realizados | manual | 6d | 2013-11-27 | 2013-12-04 |  |  |  |
| 217 | 4.4 | Video Tutorial de uso | manual | 5d | 2013-12-02 | 2013-12-06 |  |  |  |
| 218 | 4.5 | **Gestión** |  | 15d | 2013-11-18 | 2013-12-06 |  |  |  |
| 219 | 4.5.1 | Costos | manual | 15d | 2013-11-18 | 2013-12-06 |  |  |  |
| 220 | 4.5.2 | Cronograma | manual | 15d | 2013-11-18 | 2013-12-06 |  |  |  |
| 221 | 4.5.3 | Riesgos | manual | 15d | 2013-11-18 | 2013-12-06 |  |  |  |
| 222 | 4.5.4 | Calidad | manual | 15d | 2013-11-18 | 2013-12-06 |  |  |  |
